# CRM Online

Schedule from MS Project, 2012-09-01 to 2012-11-02, A marks actual dates.
.

## Calendars

- Padrão: Mon-Fri 08:00-12:00, 13:00-17:00; Sat 08:00-13:00; Sun off.

## Resources

| Resource |
| --- |
| Israel |
| Rômulo |
| Túlio |
| Wander |

## Schedule

| ID | WBS | Task | Duration | Start | Finish | Predecessors | Complete | Remaining | Baseline start | Baseline finish | Baseline duration | Total slack | Free slack | Constraint | Resources | Work | Actual work |
| --- | --- | --- | --- | --- | --- | --- | --- | --- | --- | --- | --- | --- | --- | --- | --- | --- | --- |
| 1 | 1 | **Entrega 03** | 13.25d | 2012-09-01 A | 2012-09-18 |  | 32% | 8.97d | 2012-09-01 | 2012-09-14 | 10.38d | 36.88d |  |  |  | 198h | 64h |
| 2 | 1.1 | **Especificação** | 7.88d | 2012-09-07 A | 2012-09-17 |  | 17% | 6.53d | 2012-09-04 | 2012-09-11 | 6.25d | 37.62d |  |  |  | 94h | 16h |
| 3 | 1.1.1 | Introdução | 2.5d | 2012-09-10 | 2012-09-12 |  |  |  | 2012-09-04 | 2012-09-06 | 2.5d | 44d | 0d | start no earlier than 2012-09-08 | Túlio | 20h |  |
| 4 | 1.1.2 | Descrição Geral | 2.5d | 2012-09-07 A | 2012-09-10 |  | 80% | 0.5d | 2012-09-04 | 2012-09-06 | 2.5d | 0d |  | start no earlier than 2012-09-06 | Wander | 20h | 16h |
| 5 | 1.1.3 | **Requisitos Específicos** | 6.25d | 2012-09-10 | 2012-09-17 |  |  |  | 2012-09-04 | 2012-09-11 | 6.25d | 28.12d |  |  |  | 54h |  |
| 6 | 1.1.3.1 | Requisitos Funcionais | 3d | 2012-09-10 | 2012-09-12 |  |  |  | 2012-09-04 | 2012-09-07 | 3.75d | 34.5d | 0d | start no earlier than 2012-09-08 | Israel | 24h |  |
| 7 | 1.1.3.2 | Requisitos Não Funcionais | 3.75d | 2012-09-12 | 2012-09-17 | 3 |  |  | 2012-09-06 | 2012-09-11 | 3.75d | 44d |  | start no earlier than 2012-09-04 | Túlio | 30h |  |
| 8 | 1.2 | **Diagramas** | 13.25d | 2012-09-01 A | 2012-09-18 |  | 46% | 7.13d | 2012-09-01 | 2012-09-14 | 10.38d | 34.5d | 0d |  |  | 104h | 48h |
| 9 | 1.2.1 | Casos de Uso | 2d | 2012-09-01 A | 2012-09-04 A |  | 100% |  | 2012-09-01 | 2012-09-04 | 2.5d |  |  | start no earlier than 2012-09-01 | Rômulo | 16h | 16h |
| 10 | 1.2.2 | **Sequência** | 1d | 2012-09-10 | 2012-09-11 |  |  |  | 2012-09-06 | 2012-09-10 | 2.5d | 0d |  |  |  | 8h |  |
| 11 | 1.2.2.1 | Gerenciar Permissões de Usuários | 1d | 2012-09-10 | 2012-09-11 | 4 |  |  | 2012-09-06 | 2012-09-10 | 2.5d | 0d |  |  | Wander | 8h |  |
| 12 | 1.2.3 | Atividades (incl. Atores) | 2d | 2012-09-11 | 2012-09-13 | 11 |  |  | 2012-09-10 | 2012-09-12 | 2.5d | 0d |  |  | Wander | 16h |  |
| 13 | 1.2.4 | Classes de Domínio | 2d | 2012-09-04 A | 2012-09-06 A | 9 | 100% |  | 2012-09-04 | 2012-09-07 | 2.5d |  |  | start no earlier than 2012-09-01 | Rômulo | 16h | 16h |
| 14 | 1.2.5 | Componentes | 2d | 2012-09-13 | 2012-09-14 | 6 |  |  | 2012-09-07 | 2012-09-11 | 2.5d | 34.5d | 0d |  | Israel | 16h |  |
| 15 | 1.2.6 | Implantação | 2d | 2012-09-15 | 2012-09-18 | 14 |  |  | 2012-09-11 | 2012-09-14 | 2.5d | 34.5d | 0d |  | Israel | 16h |  |
| 16 | 1.2.7 | Banco de Dados | 2d | 2012-09-10 A | 2012-09-11 A |  | 100% |  | 2012-09-11 | 2012-09-14 | 2.5d |  |  | start no earlier than 2012-09-10 | Rômulo | 16h | 16h |
| 17 | 2 | **Entrega 04** | 13.75d | 2012-09-12 | 2012-09-28 |  |  |  | 2012-09-12 | 2012-09-28 | 12.5d | 0.62d |  |  |  | 310h |  |
| 18 | 2.1 | **Código Fonte** | 11.25d | 2012-09-12 | 2012-09-25 |  |  |  | 2012-09-12 | 2012-09-26 | 11.25d | 0.62d |  |  |  | 230h |  |
| 19 | 2.1.1 | Gerenciar Clientes | 6.25d | 2012-09-13 | 2012-09-21 | 12 |  |  | 2012-09-12 | 2012-09-20 | 6.25d | 0d |  |  | Wander | 50h |  |
| 20 | 2.1.2 | Gerenciar Permissões de Usuários | 3.75d | 2012-09-19 | 2012-09-24 | 21 |  |  | 2012-09-21 | 2012-09-26 | 3.75d | 0.62d | 0d |  | Rômulo | 30h |  |
| 21 | 2.1.3 | Gerenciar Usuários | 6.25d | 2012-09-12 | 2012-09-19 | 16 |  |  | 2012-09-14 | 2012-09-21 | 6.25d | 0.62d | 0d |  | Rômulo | 50h |  |
| 22 | 2.1.4 | Gerenciar Empresa | 6.25d | 2012-09-18 | 2012-09-25 | 8 |  |  | 2012-09-14 | 2012-09-21 | 6.25d | 34.5d | 0d |  | Túlio | 50h |  |
| 23 | 2.1.5 | Gerenciar Atividades | 6.25d | 2012-09-18 | 2012-09-25 | 15 |  |  | 2012-09-14 | 2012-09-21 | 6.25d | 34.5d | 0d |  | Israel | 50h |  |
| 24 | 2.2 | Manual | 2.5d | 2012-09-26 | 2012-09-28 | 23 |  |  | 2012-09-21 | 2012-09-25 | 2.5d | 34.5d |  |  | Israel | 20h |  |
| 25 | 2.3 | Store Procedure | 2.5d | 2012-09-26 | 2012-09-28 | 22 |  |  | 2012-09-21 | 2012-09-25 | 2.5d | 34.5d |  |  | Túlio | 20h |  |
| 26 | 2.4 | Script Banco de Dados | 1.25d | 2012-09-24 | 2012-09-25 | 20 |  |  | 2012-09-26 | 2012-09-28 | 1.25d | 0.62d |  |  | Rômulo | 10h |  |
| 27 | 2.5 | Diagrama de Classes do Sistema | 3.75d | 2012-09-21 | 2012-09-26 | 19 |  |  | 2012-09-20 | 2012-09-25 | 3.75d | 0d |  |  | Wander | 30h |  |

| ID | WBS | Task | Duration | Start | Finish | Predecessors | Baseline start | Baseline finish | Baseline duration | Total slack | Free slack | Resources | Work |
| --- | --- | --- | --- | --- | --- | --- | --- | --- | --- | --- | --- | --- | --- |
| 28 | 3 | **Entrega 06** | 20d | 2012-09-26 | 2012-10-22 |  | 2012-09-28 | 2012-10-23 | 20d | 0d |  |  | 320h |
| 29 | 3.1 | Aplicativo Android | 12.5d | 2012-09-26 | 2012-10-11 | 26, 27 | 2012-09-28 | 2012-10-13 | 12.5d | 0d |  | Rômulo; Wander | 200h |
| 30 | 3.2 | Testes de Software | 5d | 2012-10-11 | 2012-10-18 | 29 | 2012-10-13 | 2012-10-19 | 5d | 0d |  | Túlio; Israel | 80h |
| 31 | 3.3 | Avaliação de Interfaces | 2.5d | 2012-10-18 | 2012-10-22 | 30 | 2012-10-19 | 2012-10-23 | 2.5d | 0d |  | Israel; Túlio | 40h |
| 32 | 4 | **Entrega 05** | 17.5d | 2012-10-11 | 2012-11-02 |  | 2012-10-23 | 2012-11-13 | 17d | 0d |  |  | 136h |
| 33 | 4.1 | Casos de Uso no GitHub | 5d | 2012-10-22 | 2012-10-27 | 28 | 2012-10-23 | 2012-10-29 | 5d | 0d |  | Israel | 40h |
| 34 | 4.2 | Classes de Teste | 5d | 2012-10-27 | 2012-11-02 | 33 | 2012-10-30 | 2012-11-05 | 5d | 0d |  | Túlio | 40h |
| 35 | 4.3 | Documentação dos Ciclos de TDD | 5d | 2012-10-11 | 2012-10-18 | 29, 34 | 2012-11-05 | 2012-11-10 | 5d | 10.5d | 0d | Wander | 40h |
| 36 | 4.4 | Prontificação do GitHub Atualizado | 2d | 2012-10-18 | 2012-10-20 | 35 | 2012-11-10 | 2012-11-13 | 2d | 10.5d |  | Rômulo | 16h |
