# CRM Online

Schedule from MS Project, 2012-09-01 to 2012-10-31, A marks actual dates.
.

## Calendars

- Padrão: Mon-Fri 08:00-12:00, 13:00-17:00; Sat 08:00-13:00; Sun off.

## Resources

| Resource |
| --- |
| Israel |
| Rômulo |
| Túlio |
| Wander |
| Testes |

## Schedule

| ID | WBS | Task | Duration | Start | Finish | Predecessors | Complete | Baseline start | Baseline finish | Baseline duration | Constraint | Deadline | Resources | Work | Actual work |
| --- | --- | --- | --- | --- | --- | --- | --- | --- | --- | --- | --- | --- | --- | --- | --- |
| 1 | 1 | **Entrega 03** | 17.5d | 2012-09-01 A | 2012-09-23 A |  | 100% | 2012-09-01 | 2012-09-14 | 10.38d |  |  |  | 118h | 118h |
| 2 | 1.1 | **Especificação** | 12.88d | 2012-09-07 A | 2012-09-23 A |  | 100% | 2012-09-04 | 2012-09-11 | 6.25d |  |  |  | 44h | 44h |
| 3 | 1.1.1 | Introdução | 0.5d | 2012-09-21 A | 2012-09-21 A |  | 100% | 2012-09-04 | 2012-09-06 | 2.5d |  | 2012-09-22 | Túlio | 4h | 4h |
| 4 | 1.1.2 | Descrição Geral | 3d | 2012-09-07 A | 2012-09-11 A |  | 100% | 2012-09-04 | 2012-09-06 | 2.5d |  | 2012-09-22 | Wander | 24h | 24h |
| 5 | 1.1.3 | **Requisitos Específicos** | 1.62d | 2012-09-21 A | 2012-09-23 A |  | 100% | 2012-09-04 | 2012-09-11 | 6.25d |  |  |  | 16h | 16h |
| 6 | 1.1.3.1 | Interfaces do Sistema | 0.62d | 2012-09-22 A | 2012-09-23 A |  | 100% | 2012-09-04 | 2012-09-07 |  | start no earlier than 2012-09-21 | 2012-09-22 | Israel | 8h | 8h |
| 7 | 1.1.3.2 | Requisitos Funcionais | 0.5d | 2012-09-21 A | 2012-09-22 A | 8 | 100% | 2012-09-04 | 2012-09-07 | 3.75d |  | 2012-09-22 | Túlio | 4h | 4h |
| 8 | 1.1.3.3 | Requisitos Não Funcionais | 0.5d | 2012-09-21 A | 2012-09-21 A | 3 | 100% | 2012-09-06 | 2012-09-11 | 3.75d |  | 2012-09-22 | Túlio | 4h | 4h |
| 9 | 1.2 | **Diagramas** | 16.88d | 2012-09-01 A | 2012-09-21 A |  | 100% | 2012-09-01 | 2012-09-14 | 10.38d |  |  |  | 74h | 74h |
| 10 | 1.2.1 | Casos de Uso | 2d | 2012-09-01 A | 2012-09-04 A |  | 100% | 2012-09-01 | 2012-09-04 | 2.5d |  | 2012-09-22 | Rômulo | 16h | 16h |
| 11 | 1.2.2 | **Sequência** | 0.25d | 2012-09-20 A | 2012-09-20 A |  | 100% | 2012-09-06 | 2012-09-10 | 2.5d |  |  |  | 2h | 2h |
| 12 | 1.2.2.1 | Gerenciar Permissões de Usuários | 0.25d | 2012-09-20 A | 2012-09-20 A | 4 | 100% | 2012-09-06 | 2012-09-10 | 2.5d |  | 2012-09-22 | Wander | 2h | 2h |
| 13 | 1.2.3 | Atividades (incl. Atores) | 1d | 2012-09-21 A | 2012-09-21 A | 4 | 100% | 2012-09-10 | 2012-09-12 | 2.5d |  | 2012-09-22 | Wander | 8h | 8h |
| 14 | 1.2.4 | Classes de Domínio | 2d | 2012-09-04 A | 2012-09-06 A | 10 | 100% | 2012-09-04 | 2012-09-07 | 2.5d |  | 2012-09-22 | Rômulo | 16h | 16h |
| 15 | 1.2.5 | Implantação | 2d | 2012-09-14 A | 2012-09-17 A | 14 | 100% | 2012-09-11 | 2012-09-14 | 2.5d |  | 2012-09-22 | Rômulo | 16h | 16h |
| 16 | 1.2.6 | Banco de Dados | 2d | 2012-09-10 A | 2012-09-11 A |  | 100% | 2012-09-11 | 2012-09-14 | 2.5d |  | 2012-09-22 | Rômulo | 16h | 16h |
| 17 | 2 | **Entrega 04** | 25d | 2012-09-12 A | 2012-10-12 A |  | 100% | 2012-09-12 | 2012-09-28 | 12.5d |  |  |  | 221h | 221h |
| 18 | 2.1 | **Código Fonte** | 24.75d | 2012-09-12 A | 2012-10-12 A |  | 100% | 2012-09-12 | 2012-09-26 | 11.25d |  |  |  | 201h | 201h |
| 19 | 2.1.1 | Gerenciar Clientes | 18.12d | 2012-09-12 A | 2012-10-04 A | 26 | 100% | 2012-09-12 | 2012-09-20 | 6.25d |  | 2012-10-13 | Rômulo | 145h | 145h |
| 20 | 2.1.2 | Gerenciar Permissões de Usuários | 1d | 2012-10-10 A | 2012-10-11 A | 21 | 100% | 2012-09-21 | 2012-09-26 | 3.75d |  | 2012-10-13 | Rômulo | 8h | 8h |
| 21 | 2.1.3 | Gerenciar Usuários | 1.75d | 2012-10-09 A | 2012-10-10 A | 27 | 100% | 2012-09-14 | 2012-09-21 | 6.25d | start no earlier than 2012-10-08 | 2012-10-13 | Wander | 14h | 14h |
| 22 | 2.1.4 | Gerenciar Empresa | 1.75d | 2012-10-08 A | 2012-10-09 A | 7 | 100% | 2012-09-14 | 2012-09-21 | 6.25d | start no earlier than 2012-10-08 | 2012-10-13 | Túlio | 14h | 14h |
| 23 | 2.1.5 | Gerenciar Atividades | 2.5d | 2012-10-10 A | 2012-10-12 A | 6 | 100% | 2012-09-14 | 2012-09-21 | 6.25d | start no earlier than 2012-10-10 | 2012-10-13 | Israel | 20h | 20h |
| 24 | 2.2 | Manual de Implantação | 0.5d | 2012-09-26 A | 2012-09-26 A | 19 | 100% | 2012-09-21 | 2012-09-25 | 2.5d | start no earlier than 2012-09-25 | 2012-10-13 | Rômulo | 4h | 4h |
| 25 | 2.3 | Stored Procedure | 0.5d | 2012-09-21 A | 2012-09-24 A | 15 | 100% | 2012-09-21 | 2012-09-25 | 2.5d |  | 2012-10-13 | Rômulo | 4h | 4h |
| 26 | 2.4 | Script Banco de Dados | 0.25d | 2012-09-12 A | 2012-09-12 A | 16 | 100% | 2012-09-26 | 2012-09-28 | 1.25d |  | 2012-10-13 | Rômulo | 2h | 2h |
| 27 | 2.5 | Diagrama de Classes do Sistema | 1.25d | 2012-09-25 A | 2012-09-26 A | 13 | 100% | 2012-09-20 | 2012-09-25 | 3.75d |  | 2012-10-13 | Wander | 10h | 10h |

| ID | WBS | Task | Duration | Start | Finish | Predecessors | Complete | Remaining | Baseline start | Baseline finish | Baseline duration | Total slack | Constraint | Deadline | Resources | Work | Actual work |
| --- | --- | --- | --- | --- | --- | --- | --- | --- | --- | --- | --- | --- | --- | --- | --- | --- | --- |
| 28 | 3 | **Entrega 06** | 16.5d | 2012-10-09 A | 2012-10-30 |  | 63% | 6.19d | 2012-09-28 | 2012-10-23 | 20d | 1d |  |  |  | 180h | 100h |
| 29 | 3.1 | Aplicativo Android | 2.5d | 2012-10-24 | 2012-10-26 | 17 |  |  | 2012-09-28 | 2012-10-13 | 12.5d | 1.12d | start no earlier than 2012-10-23 | 2012-10-28 | Túlio; Wander | 40h |  |
| 30 | 3.2 | Testes de Software | 12.5d | 2012-10-09 A | 2012-10-24 A | 22 | 100% |  | 2012-10-13 | 2012-10-19 | 5d |  |  | 2012-10-28 | Testes | 100h | 100h |
| 31 | 3.3 | Avaliação de Interfaces | 5d | 2012-10-24 | 2012-10-30 | 17 |  |  | 2012-10-19 | 2012-10-23 | 2.5d | 1d | start no earlier than 2012-10-23 | 2012-11-04 | Israel | 40h |  |
| 32 | 4 | **Entrega 05** | 5d | 2012-10-25 | 2012-10-31 |  |  |  | 2012-10-23 | 2012-11-13 | 17d | 0d |  |  |  | 40h |  |
| 33 | 4.1 | Casos de Uso no GitHub | 1.25d | 2012-10-25 | 2012-10-26 | 30 |  |  |  |  |  | 0d |  | 2012-11-19 | Testes | 10h |  |
| 34 | 4.2 | Classes de Teste | 1.25d | 2012-10-26 | 2012-10-27 | 33 |  |  |  |  |  | 0d |  | 2012-11-19 | Testes | 10h |  |
| 35 | 4.3 | Documentação dos Ciclos de TDD | 1.25d | 2012-10-27 | 2012-10-30 | 34 |  |  |  |  |  | 0d |  | 2012-11-19 | Testes | 10h |  |
| 36 | 4.4 | Prontificação do GitHub Atualizado | 1.25d | 2012-10-30 | 2012-10-31 | 35 |  |  |  |  |  | 0d |  | 2012-11-19 | Testes | 10h |  |
